# SIGETI

Schedule from Planner, 2011-09-08 to 2011-12-08.
Univalle
Phase: Elaboración

## Calendars

- Predeterminado: Mon-Fri 20:00-21:30; Sat-Sun 10:00-13:00.

## Resources

| Resource | Group |
| --- | --- |
| Cristian Leonardo Ríos López | Desarrollo de Software II |
| Luis Felipe Vargas Rojas | Desarrollo de Software II |
| Edgar Andrés Moncada Taborda | Desarrollo de Software II |
| Yerminson Doney Gonzalez Muñoz | Desarrollo de Software II |
| María Andrea Cruz Blandón | Desarrollo de Software II |

## Schedule

| ID | WBS | Task | Duration | Start | Finish | Predecessors | Complete | Constraint | Resources | Work |
| --- | --- | --- | --- | --- | --- | --- | --- | --- | --- | --- |
| 1 | 1 | **Inicio** | 0.94d | 2011-09-08 | 2011-09-11 |  | 100% | must start on 2011-09-08 |  | 13.5h |
| 2 | 1.1 | **Análisis de requerimientos** |  | 2011-09-08 | 2011-09-09 |  | 100% | must start on 2011-09-08 |  | 6h |
| 3 | 1.1.1 | Requerimientos funcionales |  | 2011-09-08 | 2011-09-08 |  | 100% |  | Cristian Leonardo Ríos López [50%]; Luis Felipe Vargas Rojas; Edgar Andrés Moncada Taborda; Yerminson Doney Gonzalez Muñoz [50%] | 3h |
| 4 | 1.1.2 | Requerimientos no funcionales |  | 2011-09-08 | 2011-09-09 |  | 100% | must start on 2011-09-08 | Cristian Leonardo Ríos López [50%]; Yerminson Doney Gonzalez Muñoz [50%] | 3h |
| 5 | 1.2 | **Validación de requerimientos** |  | 2011-09-10 | 2011-09-11 | 2 | 100% | must start on 2011-09-08 |  | 7.5h |
| 6 | 1.2.1 | Lista de chequeo requerimientos funcionales |  | 2011-09-10 | 2011-09-10 | 3 | 100% |  | Cristian Leonardo Ríos López [33%]; Edgar Andrés Moncada Taborda [50%]; Yerminson Doney Gonzalez Muñoz [33%]; María Andrea Cruz Blandón [50%] | 3h |
| 7 | 1.2.2 | Lista de chequeo requerimientos no funcionales |  | 2011-09-10 | 2011-09-11 | 4 | 100% |  | Cristian Leonardo Ríos López [33%]; Yerminson Doney Gonzalez Muñoz [33%] | 3h |
| 8 | 1.2.3 | Matriz de chequeo |  | 2011-09-11 | 2011-09-11 | 6FS+1h | 100% | must start on 2011-09-11 | Cristian Leonardo Ríos López [33%]; Edgar Andrés Moncada Taborda [50%]; Yerminson Doney Gonzalez Muñoz [33%]; María Andrea Cruz Blandón [50%] | 1.5h |
| 9 | 2 | **Elaboración** |  | 2011-09-12 | 2011-10-19 |  |  |  |  | 59.5h |
| 10 | 2.1 | Documento SRS |  | 2011-09-12 | 2011-09-15 | 5FS+24h, 2FS+24h | 100% | must start on 2011-09-12 | Edgar Andrés Moncada Taborda [50%]; María Andrea Cruz Blandón [50%] | 6h |
| 11 | 2.2 | Iteración fase inicio, corrección requerimientos funcionales |  | 2011-09-23 | 2011-09-24 | 1FS+48h | 80% | must start on 2011-09-23 | Edgar Andrés Moncada Taborda | 2h |
| 12 | 2.3 | **Análisis y elaboración de casos de uso** |  | 2011-09-15 | 2011-09-21 |  | 100% | must start on 2011-09-15 |  | 9h |
| 13 | 2.3.1 | Diagrama de casos de uso |  | 2011-09-15 | 2011-09-17 |  | 100% | must start on 2011-09-15 | Cristian Leonardo Ríos López [25%]; Luis Felipe Vargas Rojas [25%]; Edgar Andrés Moncada Taborda [25%]; Yerminson Doney Gonzalez Muñoz [25%]; María Andrea Cruz Blandón [10%] | 6h |
| 14 | 2.3.2 | Casos de uso expandidos |  | 2011-09-20 | 2011-09-21 | 13 | 100% | must start on 2011-09-20 | Cristian Leonardo Ríos López [50%]; Yerminson Doney Gonzalez Muñoz [70%]; María Andrea Cruz Blandón [40%] | 3h |
| 15 | 2.4 | **Modelo de datos** |  | 2011-10-01 | 2011-10-04 |  |  |  |  | 10.5h |
| 16 | 2.4.1 | Diagrama E-R |  | 2011-10-01 | 2011-10-03 |  | 50% | must start on 2011-10-01 | Cristian Leonardo Ríos López [33%]; Luis Felipe Vargas Rojas [33%]; María Andrea Cruz Blandón [34%] | 7.5h |
| 17 | 2.4.2 | Diagrama UML |  | 2011-10-03 | 2011-10-03 | 16 |  | must start on 2011-10-03 | Edgar Andrés Moncada Taborda [50%]; Yerminson Doney Gonzalez Muñoz [50%] | 1.5h |
| 18 | 2.4.3 | Script SQL |  | 2011-10-04 | 2011-10-04 | 16 |  | must start on 2011-10-04 | Luis Felipe Vargas Rojas [50%]; María Andrea Cruz Blandón [50%] | 1.5h |
| 19 | 2.5 | Modelo arquitectural |  | 2011-10-07 | 2011-10-09 |  |  | must start on 2011-10-07 | Luis Felipe Vargas Rojas [50%]; Edgar Andrés Moncada Taborda [50%] | 6h |
| 20 | 2.6 | **Plan de proyecto** |  | 2011-09-28 | 2011-10-01 |  |  |  |  | 11h |
| 21 | 2.6.1 | Calendarización con responsables |  | 2011-09-28 | 2011-10-01 |  | 50% | must start on 2011-09-28 | Luis Felipe Vargas Rojas [50%]; Edgar Andrés Moncada Taborda [30%]; María Andrea Cruz Blandón [50%] | 6h |
| 22 | 2.6.2 | Matriz funcional |  | 2011-10-01 | 2011-10-01 | 21 | 50% | must start on 2011-10-01 |  | 1h |
| 23 | 2.6.3 | Diagrama de gantt |  | 2011-10-01 | 2011-10-01 | 21 | 50% | must start on 2011-10-01 |  | 1h |
| 24 | 2.6.4 | Riesgos y acciones de contigencia. |  | 2011-09-28 | 2011-09-29 |  | 100% | must start on 2011-09-28 | Cristian Leonardo Ríos López [50%]; Yerminson Doney Gonzalez Muñoz [50%]; María Andrea Cruz Blandón [20%] | 3h |

Notes:
- 2: Hace parte de la primera entrega.
- 3: Realizar requerimientos funcionales por modulos, es decir, modulo de tarjetsas, buses-rutas y estaciones, empleados, reportes y reclamos. Presentarlos cumpliendo el estándar IEEE-830
- 4: Se debe especificar las restricciones en las que se ha modelado la solución. Se deben establecer los estándares a usar, las tecnologías, tiempos de respuesta y el condiciones del hardware como mínimo.
- 5: Hace parte de la primera entrega.
- 6: Se debe establecer los las cuestiones para calificar los siguientes items: necesario, claro, verificable, viable, completo, priorizable y consistente. Una vez establecidos los items se proce a validar y corregir los requerimientos usando esta lista de chequeo.
- 7: Se debe redactar las cuestiones para calificar los siguientes items: desempeño del sistema(tiempo), confiabilidad del sistema, hardware, software y comunicaciones. Una vez se obtenga la lista con todas las cuestiones se procede a evaluar los requerimientos no funcionales y corregirles si es necesario.
- 8: Con los resultados obtenidos en la la lista de chequeo se debe realizar la matriz de chequeo con la primera iteración de revisión.
- 10: Escribir el documento SRS (Software Requirements Specification) incluir requerimientos funcionales, no funcionales, las listas de chequeo y la matriz de chequeo.
- 12: Hace parte de la segunda entrega.
- 13: Realizar los diagrama de casos de uso, realizarlo por paquetes(modulos) estos son: gestión de usuarios, ingresar al sistema, general, tarjetas, rutas, buses, estaciones, reclamos y reportes. usar UML 2.0
- 14: Expandir dos modulos de casos de uso, los modulos a expandir son, cu_reclamos y cu_buses. Usar plantilla.
- 15: Hace parte de cuarta entrega.
- 16: Realizar el diagrma entidad relación (E.R) conforme al enunciado del proyecto.
- 17: Una vez se tenga el diagrama E-R realizar el modelo de datos en UML 2.0.
- 18: Una vez terminado el diagrama E-R se procede a realizar el script en SQL para postgres version 8.4.x
- 19: Realizar especificación de la arquitectura a usa, y realizar el correspondiente diagrama.
- 20: Hace parte de la tercera entrega.
- 21: Listas las actividades por realizar con sus respectivos tiempos y establecer los responsables. Usar la herramienta planner de gnome version 0.14.x
- 22: Realizando la calendarizacion con responsables, obtener la matriz funcional.
- 23: Despues de realizar la calendarizacion con responsables obtener el diagrama de gantt.
- 24: Realizar el análisis de riesgos, del proyecto, tecnología y del negocio, a su vez las acciones de contingencia correspondientes.

| ID | WBS | Task | Duration | Start | Finish | Predecessors | Complete | Constraint | Resources | Work |
| --- | --- | --- | --- | --- | --- | --- | --- | --- | --- | --- |
| 25 | 2.7 | **Diseño** |  | 2011-10-09 | 2011-10-19 |  |  |  |  | 15h |
| 26 | 2.7.1 | Diagrama de paquetes |  | 2011-10-09 | 2011-10-09 |  |  | must start on 2011-10-09 | Luis Felipe Vargas Rojas [50%]; Yerminson Doney Gonzalez Muñoz | 3h |
| 27 | 2.7.2 | Diagrama de clases |  | 2011-10-11 | 2011-10-12 | 26 |  | must start on 2011-10-11 | Cristian Leonardo Ríos López; Luis Felipe Vargas Rojas [50%]; Edgar Andrés Moncada Taborda [50%]; Yerminson Doney Gonzalez Muñoz; María Andrea Cruz Blandón [50%] | 7.5h |
| 28 | 2.7.3 | Bocetos de interfaz |  | 2011-10-17 | 2011-10-19 |  |  | must start on 2011-10-17 | Luis Felipe Vargas Rojas [50%]; Edgar Andrés Moncada Taborda [50%] | 4.5h |
| 29 | 3 | **Capacitación** |  | 2011-10-17 | 2011-10-24 |  |  |  |  | 15h |
| 30 | 3.1 | JSF |  | 2011-10-17 | 2011-10-24 |  |  | must start on 2011-10-17 | Cristian Leonardo Ríos López [20%]; Luis Felipe Vargas Rojas [20%]; Edgar Andrés Moncada Taborda [20%]; Yerminson Doney Gonzalez Muñoz [20%]; María Andrea Cruz Blandón [20%] | 15h |
| 31 | 4 | **Implementación** |  | 2011-10-20 | 2011-12-01 |  |  |  |  | 171h |
| 32 | 4.1 | Gestión de usuarios | 2.81d | 2011-10-20 | 2011-10-30 | 19, 27 |  | must start on 2011-10-20 | Cristian Leonardo Ríos López [20%]; Luis Felipe Vargas Rojas [20%]; Edgar Andrés Moncada Taborda [20%]; Yerminson Doney Gonzalez Muñoz [20%]; María Andrea Cruz Blandón [20%] | 22.5h |
| 33 | 4.2 | Gestión de tarjetas | 2.81d | 2011-10-27 | 2011-11-06 | 27, 19 |  | must start on 2011-10-27 | Cristian Leonardo Ríos López [20%]; Luis Felipe Vargas Rojas [20%]; Edgar Andrés Moncada Taborda [20%]; Yerminson Doney Gonzalez Muñoz [20%]; María Andrea Cruz Blandón [20%] | 22.5h |
| 34 | 4.3 | Gestión de buses | 2.81d | 2011-11-10 | 2011-11-20 | 27, 19 |  | must start on 2011-11-10 | Cristian Leonardo Ríos López [20%]; Luis Felipe Vargas Rojas [20%]; Edgar Andrés Moncada Taborda [20%]; Yerminson Doney Gonzalez Muñoz [20%]; María Andrea Cruz Blandón [20%] | 22.5h |
| 35 | 4.4 | Gestión de estaciones | 2.81d | 2011-11-10 | 2011-11-20 | 27, 19 |  | must start on 2011-11-10 | Cristian Leonardo Ríos López [20%]; Luis Felipe Vargas Rojas [20%]; Edgar Andrés Moncada Taborda [20%]; Yerminson Doney Gonzalez Muñoz [20%]; María Andrea Cruz Blandón [20%] | 22.5h |
| 36 | 4.5 | Gestión de rutas | 1.5d | 2011-11-17 | 2011-11-22 | 35, 34 |  | must start on 2011-11-17 | Cristian Leonardo Ríos López [20%]; Luis Felipe Vargas Rojas [20%]; Edgar Andrés Moncada Taborda [20%]; Yerminson Doney Gonzalez Muñoz [20%]; María Andrea Cruz Blandón [20%] | 12h |
| 37 | 4.6 | Reportes | 1.12d | 2011-11-24 | 2011-11-27 | 36, 35, 34, 33, 32 |  | must start on 2011-11-24 | Cristian Leonardo Ríos López [20%]; Luis Felipe Vargas Rojas [20%]; Edgar Andrés Moncada Taborda [20%]; Yerminson Doney Gonzalez Muñoz [20%]; María Andrea Cruz Blandón [20%] | 9h |
| 38 | 4.7 | Pruebas funcionales | 0.56d | 2011-11-24 | 2011-11-26 | 36, 35, 34, 33, 32 |  | must start on 2011-11-24 | Cristian Leonardo Ríos López [20%]; Luis Felipe Vargas Rojas [20%]; Edgar Andrés Moncada Taborda [20%]; Yerminson Doney Gonzalez Muñoz [20%]; María Andrea Cruz Blandón [20%] | 4.5h |
| 39 | 4.8 | Integración |  | 2011-11-03 | 2011-11-26 |  |  | must start on 2011-11-03 |  | 45h |
| 40 | 4.9 | Pruebas de integración | 0.75d | 2011-11-27 | 2011-11-29 | 39, 38 |  | must start on 2011-11-27 | Cristian Leonardo Ríos López [20%]; Luis Felipe Vargas Rojas [20%]; Edgar Andrés Moncada Taborda [20%]; Yerminson Doney Gonzalez Muñoz [20%]; María Andrea Cruz Blandón [20%] | 6h |
| 41 | 4.10 | Pruebas de usabilidad | 0.56d | 2011-11-29 | 2011-12-01 | 40, 39 |  | must start on 2011-11-29 | Cristian Leonardo Ríos López [20%]; Luis Felipe Vargas Rojas [20%]; Edgar Andrés Moncada Taborda [20%]; Yerminson Doney Gonzalez Muñoz [20%]; María Andrea Cruz Blandón [20%] | 4.5h |
| 42 | 5 | **Transición** |  | 2011-09-08 | 2011-12-08 |  |  |  |  | 187.5h |
| 43 | 5.1 | Entrega 1 documentación | 20.44d | 2011-09-08 | 2011-12-01 |  | 50% |  |  | 163.5h |
| 44 | 5.2 | Entrega 2 manules de usuario |  | 2011-11-26 | 2011-11-29 |  |  | must start on 2011-11-26 | Cristian Leonardo Ríos López [50%]; Yerminson Doney Gonzalez Muñoz [50%] | 8h |
| 45 | 5.3 | Entrega 3 capacitación | 1.88d | 2011-12-01 | 2011-12-08 |  |  | must start on 2011-12-01 | Cristian Leonardo Ríos López [20%]; Luis Felipe Vargas Rojas [20%]; Edgar Andrés Moncada Taborda [20%]; Yerminson Doney Gonzalez Muñoz [20%]; María Andrea Cruz Blandón [20%] | 15h |
| 46 | 5.4 | Entrega 4 aplicación completa | 0.12d | 2011-12-08 | 2011-12-08 |  |  | must start on 2011-12-08 | Cristian Leonardo Ríos López [20%]; Luis Felipe Vargas Rojas [20%]; Edgar Andrés Moncada Taborda [20%]; Yerminson Doney Gonzalez Muñoz [20%]; María Andrea Cruz Blandón [20%] | 1h |

Notes:
- 26: Realizar el diagrama de paquetes del sistema usando UML 2.0.
- 27: Realizar los diagrama de clases para los diferentes modulos del sistema. Usar UML 2.0, bien prodría usarse Enterprise architect.
- 28: Realizar los bocetos de la interfaz gráfica. exportarlos en imagenes.
- 30: Realizar trabajo de investigación de la tecnología JSF. revisar ejemplos y realizar un ejercicio.
- 32: Realizar el modulo gestión de usuarios. manejando lo especificado en la arquitectura. Se debe entregar en funcionamiento.
- 33: Realizar el modulo de tarjetas, teniendo en cuenta lo especificado en diagrama de claes y modelo arquitectural. Se debe entregar funcional.
- 34: Realizar el modulo gestión de buses. manejando lo especificado en la arquitectura y en los diagramas de clase. Se debe entregar en funcionamiento.
- 35: Realizar el modulo gestión de estaciones, manejando lo especificado en la arquitectura y en los diagrama de clases. Se debe entregar en funcionamiento.
- 36: Realizar el modulo gestión de rutas, manejando lo especificado en la arquitectura y en los diagrama de clases. Para realizar este modulo se debe tener avanzado gestión de buses y de estaciones. Se debe entregar en funcionamiento.
- 37: Realizar los reportes teniendo en cuenta lo especificado en la arquitectura y los diagramas de clase. Para la lista de reportes, remitirse al documento SRS en la sección de requerimientos funcionales referentes a reportes.
- 38: Realizar las prubas a todos los modulos, presentar los resultados y análisis.
- 39: Esta integración se lleva a cabo a medida que se van realizando los modulos de las diferentes gestiones.
- 40: Realizar las respectivas pruebas a la aplicación, para comprobar que la integración es robusta
- 41: Realizar pruebas de usabilidad a la aplicación completa.
- 43: La entrega de documentación se realiza a lo largo del proyecto.
- 44: Realizar el respectivo manual de usuario final y el manual de usuario administrador. exportar en formato pdf.
- 45: Realizar la capacitación a los usuarios finales del sistema de transporte masivo.
- 46: Presentación de la aplicación final.
